# 07.LA25-AM1.01 (Detail Plan Project)

Schedule from MS Project, 2020-05-22 to 2020-08-25, 4 hours a day, A marks actual dates.

## Calendars

- Standard: Mon-Fri 08:00-12:00, 13:00-17:00; Sat-Sun off. Exceptions (off unless hours are given): 2020-05-22 to 2020-08-25 08:00-12:00 (4hs, recurring), 2020-05-25 (Nghỉ k học), 2020-07-13 (Nghỉ SN công ty).

## Resources

| Resource |
| --- |
| HươngNTM |
| LoanLTP |
| TMO |
| TRD |

## Schedule

| ID | WBS | Task | Duration | Start | Finish | Predecessors | Remaining | Total slack | Constraint | Resources | Work | Actual work |
| --- | --- | --- | --- | --- | --- | --- | --- | --- | --- | --- | --- | --- |
| 1 | 1 | **Detail_Plan_Project_LA25AM1(66x4=264hrs)** | 66d | 2020-05-22 08:00 A | 2020-08-25 12:00 |  | 66d | 0d |  | LoanLTP; TMO | 580h | 16h |
| 2 | 1.1 | Giới thiệu nội dung môn học Project + nội quy trong lớp LA | 1h | 2020-05-22 08:00 | 2020-05-22 09:00 |  |  | 0d | start no earlier than 2020-05-22 07:30 | HươngNTM; LoanLTP | 2h |  |
| 3 | 1.2 | **Basic** | 22.75d | 2020-05-22 09:00 A | 2020-06-24 12:00 |  | 22.75d | 0d |  | LoanLTP | 178h | 16h |
| 4 | 1.2.1 | Tìm hiểu về tool SVN | 3h | 2020-05-22 09:00 | 2020-05-22 12:00 | 2 |  | 0d |  | LoanLTP | 3h |  |
| 5 | 1.2.2 | **SQL basic** | 2d | 2020-05-26 08:00 A | 2020-05-27 12:00 |  | 2d | 0d |  | LoanLTP | 12h | 4h |
| 6 | 1.2.2.1 | Giảng SQL basic | 4h | 2020-05-26 08:00 | 2020-05-26 12:00 | 4 |  | 0d | start no earlier than 2020-01-14 07:30 | LoanLTP | 4h |  |
| 7 | 1.2.2.2 | Làm bài test SQL | 4h | 2020-05-27 08:00 | 2020-05-27 12:00 | 6 |  | 0d |  | LoanLTP | 4h |  |
| 8 | 1.2.3 | Giảng Basic web_Test basic web | 4h | 2020-05-28 08:00 | 2020-05-28 12:00 | 7 |  | 0d |  | LoanLTP | 4h |  |
| 9 | 1.2.4 | **HTML** | 3d | 2020-05-29 08:00 A | 2020-06-02 12:00 |  | 3d | 0d |  | LoanLTP | 16h | 4h |
| 10 | 1.2.4.1 | Giảng HTML - Tag - Table - Frame | 4h | 2020-05-29 08:00 | 2020-05-29 12:00 | 8 |  | 0d |  | LoanLTP | 4h |  |
| 11 | 1.2.4.2 | Giảng HTML Form | 4h | 2020-06-01 08:00 | 2020-06-01 12:00 | 10 |  | 0d |  | LoanLTP | 4h |  |
| 12 | 1.2.4.3 | Giảng HTML CSS | 4h | 2020-06-02 08:00 | 2020-06-02 12:00 | 11 |  | 0d |  | LoanLTP | 4h |  |
| 13 | 1.2.5 | **JavaScript** | 2d | 2020-06-03 08:00 A | 2020-06-04 12:00 |  | 2d | 0d |  | LoanLTP | 12h | 4h |
| 14 | 1.2.5.1 | Giảng JavaScript | 4h | 2020-06-03 08:00 | 2020-06-03 12:00 | 12 |  | 0d |  | LoanLTP | 4h |  |
| 15 | 1.2.5.2 | Bài tập JS | 4h | 2020-06-04 08:00 | 2020-06-04 12:00 | 14 |  | 0d |  | LoanLTP | 4h |  |
| 16 | 1.2.6 | **Java core** | 3d | 2020-06-05 08:00 A | 2020-06-09 12:00 |  | 3d | 0d |  | LoanLTP | 16h | 4h |
| 17 | 1.2.6.1 | Tìm hiểu về IDE | 2h | 2020-06-05 08:00 | 2020-06-05 10:00 | 15 |  | 0d |  | LoanLTP | 2h |  |
| 18 | 1.2.6.2 | Tìm hiểu về coding convention cơ bản của Java | 2h | 2020-06-05 10:00 | 2020-06-05 12:00 | 17 |  | 0d |  | LoanLTP | 2h |  |
| 19 | 1.2.6.3 | Làm bài tập java core phần 1 | 4h | 2020-06-08 08:00 | 2020-06-08 12:00 | 18 |  | 0d |  | LoanLTP | 4h |  |
| 20 | 1.2.6.4 | Làm bài tập java core phần 2 | 4h | 2020-06-09 08:00 | 2020-06-09 12:00 | 19 |  | 0d |  | LoanLTP | 4h |  |
| 21 | 1.2.7 | Giảng về Web security | 4h | 2020-06-10 08:00 | 2020-06-10 12:00 | 20 |  | 0d |  | HươngNTM; LoanLTP | 8h |  |
| 22 | 1.2.8 | Giảng về test case: Lý thuyết chung kiểm thử_Các loại kiểm thử_Giảng về Các kỹ thuật kiểm thử hộp đen | 4h | 2020-06-11 08:00 | 2020-06-11 12:00 | 21 |  | 0d |  | TMO | 4h |  |
| 23 | 1.2.9 | Tìm hiểu về Lupack | 4h | 2020-06-12 08:00 | 2020-06-12 12:00 | 22 |  | 0d |  | LoanLTP | 4h |  |
| 24 | 1.2.10 | **Tìm hiểu về JSP/Servlet** | 3d | 2020-06-15 08:00 | 2020-06-17 12:00 |  |  | 0d |  | LoanLTP | 20h |  |
| 25 | 1.2.10.1 | **Lý thuyêt** | 2d | 2020-06-15 08:00 | 2020-06-16 12:00 |  |  | 0d |  | LoanLTP | 16h |  |
| 26 | 1.2.10.1.1 | Tìm hiểu về Servlet | 4h | 2020-06-15 08:00 | 2020-06-15 12:00 | 23 |  | 0d |  | HươngNTM; LoanLTP | 8h |  |
| 27 | 1.2.10.1.2 | Tìm hiểu về JSP | 4h | 2020-06-16 08:00 | 2020-06-16 12:00 | 26 |  | 0d |  | HươngNTM; LoanLTP | 8h |  |

| ID | WBS | Task | Duration | Start | Finish | Predecessors | Total slack | Resources | Work |
| --- | --- | --- | --- | --- | --- | --- | --- | --- | --- |
| 28 | 1.2.10.2 | **Bài tập kết hợp JSP/Servlet** | 1d | 2020-06-17 08:00 | 2020-06-17 12:00 |  | 0d | LoanLTP | 4h |
| 29 | 1.2.10.2.1 | Code hiển thị màn hình ListUser | 4h | 2020-06-17 08:00 | 2020-06-17 12:00 | 27 | 0d | LoanLTP | 4h |
| 30 | 1.2.11 | Giảng về cách tìm hiểu requirement_checklist | 4h | 2020-06-18 08:00 | 2020-06-18 12:00 | 29 | 0d | TMO | 4h |
| 31 | 1.2.12 | **Test logic** | 2d | 2020-06-19 08:00 | 2020-06-22 12:00 |  | 0d | LoanLTP | 8h |
| 32 | 1.2.12.1 | Làm bài test tư duy logic1 | 4h | 2020-06-19 08:00 | 2020-06-19 12:00 | 30 | 0d | LoanLTP | 4h |
| 33 | 1.2.12.2 | Làm bài test tư duy logic2 | 4h | 2020-06-22 08:00 | 2020-06-22 12:00 | 32 | 0d | LoanLTP | 4h |
| 34 | 1.2.13 | Giảng về các khái niệm cơ bản trong thiết kế | 4h | 2020-06-23 08:00 | 2020-06-23 12:00 | 33 | 0d | HươngNTM; LoanLTP | 8h |
| 35 | 1.2.14 | Giảng về cách lập dàn ý_cách viết TESTCASE_Chụp bằng chứng | 4h | 2020-06-24 08:00 | 2020-06-24 12:00 | 34 | 0d | TMO | 4h |
| 36 | 1.3 | **Bài tập cuối khóa** | 42d | 2020-06-25 08:00 | 2020-08-24 12:00 |  | 0d | LoanLTP | 392h |
| 37 | 1.3.1 | **ManageUser** | 38d | 2020-06-25 08:00 | 2020-08-18 12:00 |  | 0d | LoanLTP | 200h |
| 38 | 1.3.1.1 | Tìm hiểu chi tiết ADM001 | 2h | 2020-06-25 08:00 | 2020-06-25 10:00 | 35 | 0d | LoanLTP | 2h |
| 39 | 1.3.1.2 | Tìm hiểu requirement chi tiết chức năng ADM002(màn hình List/Search/pagining/Sort) | 2h | 2020-06-25 10:00 | 2020-06-25 12:00 | 38 | 0d | LoanLTP | 2h |
| 40 | 1.3.1.3 | Tìm hiểu requirement chi tiết chức năng Add+Update+Delete+View dựa vào file đã note sẵn các ý chính | 4h | 2020-06-26 08:00 | 2020-06-26 12:00 | 39 | 0d | LoanLTP | 4h |
| 41 | 1.3.1.4 | Lập dàn ý Viết test case cho màn hình ADM002 | 4h | 2020-06-29 08:00 | 2020-06-29 12:00 | 40 | 0d | TMO | 4h |
| 42 | 1.3.1.5 | Viết test case ADM002 theo dàn ý | 4h | 2020-06-30 08:00 | 2020-06-30 12:00 | 41 | 0d | LoanLTP | 4h |
| 43 | 1.3.1.6 | Review test case ADM002 | 4h | 2020-07-01 08:00 | 2020-07-01 12:00 | 42 | 0d | LoanLTP | 4h |
| 44 | 1.3.1.7 | Test 50 case đầu theo test case ADM002 đã viết (có chụp bằng chứng test) | 4h | 2020-07-02 08:00 | 2020-07-02 12:00 | 43 | 0d | LoanLTP | 4h |
| 45 | 1.3.1.8 | Test ADM002(có chụp bằng chứng test + Confirm bug ADM002 | 4h | 2020-07-03 08:00 | 2020-07-03 12:00 | 44 | 0d | LoanLTP | 4h |
| 47 | 1.3.1.9 | Lập dàn ý test case chức năng Add + Edit | 4h | 2020-07-06 08:00 | 2020-07-06 12:00 | 45 | 0d | TMO | 4h |
| 48 | 1.3.1.10 | Viết test case chức năng Add | 4h | 2020-07-07 08:00 | 2020-07-07 12:00 | 47 | 0d | LoanLTP | 4h |
| 49 | 1.3.1.11 | Review test case chức năng Add | 4h | 2020-07-08 08:00 | 2020-07-08 12:00 | 48 | 0d | LoanLTP | 4h |
| 51 | 1.3.1.12 | Viết test case chức năng Edit | 4h | 2020-07-09 08:00 | 2020-07-09 12:00 | 49 | 0d | LoanLTP | 4h |
| 52 | 1.3.1.13 | Đọc và hiểu file checklist của dự án. | 1h | 2020-07-10 08:00 | 2020-07-10 09:00 | 51 | 0d | LoanLTP | 1h |
| 53 | 1.3.1.14 | Tạo database cho bài tập cuối khóa | 1h | 2020-07-10 09:00 | 2020-07-10 10:00 | 52 | 0d | LoanLTP | 1h |
| 54 | 1.3.1.15 | Tạo cấu trúc thư mục source code | 2h | 2020-07-10 10:00 | 2020-07-10 12:00 | 53 | 0d | LoanLTP | 2h |
| 55 | 1.3.1.16 | Code chức năng Login + logout | 4h | 2020-07-14 08:00 | 2020-07-14 12:00 | 54 | 0d | LoanLTP | 4h |
| 56 | 1.3.1.17 | Review chức năng Login + logout | 4h | 2020-07-15 08:00 | 2020-07-15 12:00 | 55 | 0d | LoanLTP | 4h |

| ID | WBS | Task | Duration | Start | Finish | Predecessors | Total slack | Resources | Work |
| --- | --- | --- | --- | --- | --- | --- | --- | --- | --- |
| 57 | 1.3.1.18 | **ADM002** | 7d | 2020-07-16 08:00 | 2020-07-24 12:00 |  | 0d | LoanLTP | 32h |
| 58 | 1.3.1.18.1 | Nghe Giải thích thiết kế SAD + SDD của màn hình ADM002 – tất cả các design của màn hình ADM002(list/search/paging/sort) | 4h | 2020-07-16 08:00 | 2020-07-16 12:00 | 56 | 0d | HươngNTM; LoanLTP | 8h |
| 59 | 1.3.1.18.2 | Code theo thiết kế màn hình ADM002 – trường hợp list all - chưa có pagining | 4h | 2020-07-17 08:00 | 2020-07-17 12:00 | 58 | 0d | LoanLTP | 4h |
| 60 | 1.3.1.18.3 | Code theo thiết kế màn hình ADM002 – trường hợp Search - chưa có pagining | 4h | 2020-07-20 08:00 | 2020-07-20 12:00 | 59 | 0d | LoanLTP | 4h |
| 61 | 1.3.1.18.4 | Code theo thiết kế màn hình ADM002 – có pagining | 4h | 2020-07-21 08:00 | 2020-07-21 12:00 | 60 | 0d | LoanLTP | 4h |
| 62 | 1.3.1.18.5 | Code theo thiết kế màn hình ADM002 – trường hợp sort + có pagining | 4h | 2020-07-22 08:00 | 2020-07-22 12:00 | 61 | 0d | LoanLTP | 4h |
| 63 | 1.3.1.18.6 | Hoàn thiện Code theo thiết kế màn hình ADM002 – trường hợp sort + có pagining | 4h | 2020-07-23 08:00 | 2020-07-23 12:00 | 62 | 0d | LoanLTP | 4h |
| 64 | 1.3.1.18.7 | Test theo test case chức năng ADM002 (Dùng test case TMO) | 4h | 2020-07-24 08:00 | 2020-07-24 12:00 | 63 | 0d | LoanLTP | 4h |
| 65 | 1.3.1.19 | **Add User** | 6d | 2020-07-27 08:00 | 2020-08-03 12:00 |  | 0d | LoanLTP | 24h |
| 66 | 1.3.1.19.1 | thiết kế SAD + SDD chức năng Add User | 2h | 2020-07-27 08:00 | 2020-07-27 10:00 | 64 | 0d | LoanLTP | 2h |
| 67 | 1.3.1.19.2 | Code hiển thị màn hình ADM003 – trường hợp Add theo thiết kế SAD | 6h | 2020-07-27 10:00 | 2020-07-28 12:00 | 66 | 0d | LoanLTP | 6h |
| 68 | 1.3.1.19.3 | Code hiển thị màn hình ADM004 - trường hợp Add theo thiết kế SAD | 4h | 2020-07-29 08:00 | 2020-07-29 12:00 | 67 | 0d | LoanLTP | 4h |
| 69 | 1.3.1.19.4 | Code validate cho màn hình ADM003 - trường hợp Add theo thiết kế SAD phần 1 | 4h | 2020-07-30 08:00 | 2020-07-30 12:00 | 68 | 0d | LoanLTP | 4h |
| 70 | 1.3.1.19.5 | Code validate cho màn hình ADM003 - trường hợp Add theo thiết kế SAD phần 2 | 4h | 2020-07-31 08:00 | 2020-07-31 12:00 | 69 | 0d | LoanLTP | 4h |
| 71 | 1.3.1.19.6 | Code phần ghi vào DB – trường hợp Add có thiết kế theo thiết kế SAD | 4h | 2020-08-03 08:00 | 2020-08-03 12:00 | 70 | 0d | LoanLTP | 4h |
| 72 | 1.3.1.20 | **Test** | 3d | 2020-08-04 08:00 | 2020-08-06 12:00 |  | 0d | LoanLTP | 24h |
| 73 | 1.3.1.20.1 | Test theo test case chức năng Add Phần ADM003(Test case mình viết ra) | 4h | 2020-08-04 08:00 | 2020-08-04 12:00 | 71 | 0d | LoanLTP | 4h |
| 74 | 1.3.1.20.2 | Test theo test case chức năng Add phần ADM004 (chụp bằng chứng test case ghi vào DB liên quan đến transaction: 2 case) | 4h | 2020-08-05 08:00 | 2020-08-05 12:00 | 73 | 0d | LoanLTP | 4h |
| 75 | 1.3.1.20.3 | Fix và confirm bug chức năng AddUser | 4h | 2020-08-06 08:00 | 2020-08-06 12:00 | 74 | 0d | LoanLTP | 4h |
| 76 | 1.3.1.21 | **View chi tiết user** | 1d | 2020-08-07 08:00 | 2020-08-07 12:00 |  | 0d | LoanLTP | 8h |
| 77 | 1.3.1.21.1 | Thiết kế SAD cho man hình ADM005 + Code hiển thị màn hình ADM005 theo thiết kế | 4h | 2020-08-07 08:00 | 2020-08-07 12:00 | 75 | 0d | LoanLTP | 4h |
| 78 | 1.3.1.22 | **Edit User** | 3d | 2020-08-10 08:00 | 2020-08-12 12:00 |  | 0d | LoanLTP | 24h |
| 79 | 1.3.1.22.1 | Thiết kế SAD + SDD + Code để chạy được chức năng Update | 4h | 2020-08-10 08:00 | 2020-08-10 12:00 | 77 | 0d | LoanLTP | 4h |
| 80 | 1.3.1.22.2 | Code theo thiết kế để hiển thị màn hình ADM003 và ADM004 - TH Update | 4h | 2020-08-11 08:00 | 2020-08-11 12:00 | 79 | 0d | LoanLTP | 4h |
| 81 | 1.3.1.22.3 | Code phần update dữ liệu vào DB trường Update User | 4h | 2020-08-12 08:00 | 2020-08-12 12:00 | 80 | 0d | LoanLTP | 4h |

| ID | WBS | Task | Duration | Start | Finish | Predecessors | Total slack | Resources | Work |
| --- | --- | --- | --- | --- | --- | --- | --- | --- | --- |
| 82 | 1.3.1.23 | **Delete User** | 1d | 2020-08-13 08:00 | 2020-08-13 12:00 |  | 0d | LoanLTP | 8h |
| 83 | 1.3.1.23.1 | Thiết kế SAD + Code chức năng Xóa | 4h | 2020-08-13 08:00 | 2020-08-13 12:00 | 81 | 0d | LoanLTP | 4h |
| 84 | 1.3.1.24 | **Test** | 1d | 2020-08-14 08:00 | 2020-08-14 12:00 |  | 0d | LoanLTP | 8h |
| 85 | 1.3.1.24.1 | Test theo test case chức năng Update (Test case mình viết ra, không yêu cầu chụp bằng chứng test) | 4h | 2020-08-14 08:00 | 2020-08-14 12:00 | 83 | 0d | LoanLTP | 4h |
| 86 | 1.3.1.25 | **Fix bug** | 2d | 2020-08-17 08:00 | 2020-08-18 12:00 |  | 0d | LoanLTP | 16h |
| 87 | 1.3.1.25.1 | Fix bug chức năng Update User | 4h | 2020-08-17 08:00 | 2020-08-17 12:00 | 85 | 0d | LoanLTP | 4h |
| 88 | 1.3.1.25.2 | Confirm all bug | 4h | 2020-08-18 08:00 | 2020-08-18 12:00 | 87 | 0d | LoanLTP | 4h |
| 89 | 1.3.2 | **Debug code** | 2d | 2020-08-19 08:00 | 2020-08-20 12:00 |  | 0d | LoanLTP | 16h |
| 90 | 1.3.2.1 | Debug phần 1 | 4h | 2020-08-19 08:00 | 2020-08-19 12:00 | 88 | 0d | LoanLTP | 4h |
| 91 | 1.3.2.2 | Debug phần 2 | 4h | 2020-08-20 08:00 | 2020-08-20 12:00 | 90 | 0d | LoanLTP | 4h |
| 92 | 1.3.3 | Review code 1 | 4h | 2020-08-21 08:00 | 2020-08-21 12:00 | 91 | 0d | LoanLTP | 4h |
| 93 | 1.3.4 | Review code 2 | 4h | 2020-08-24 08:00 | 2020-08-24 12:00 | 92 | 0d | LoanLTP | 4h |
| 94 | 1.4 | Tổng kết môn học Project | 4h | 2020-08-25 08:00 | 2020-08-25 12:00 | 93 | 0d | HươngNTM; LoanLTP | 8h |
